# 会员刷卡积分管理系统_项目进度计划

Schedule from MS Project, 2018-07-01 to 2018-08-31, status date 2018-07-19, 6 hours a day, costs in ¥, A marks actual dates.
Hewlett-Packard Company

## Calendars

- 标准: Mon-Fri 08:00-12:00, 13:00-17:00; Sat-Sun off. Exceptions (off unless hours are given): 2018-07-01 08:00-12:00, 13:00-17:00.

## Resources

| Resource |
| --- |
| 伍锦彬 |
| 徐兆科 |
| 马晓鹏 |
| 黄鑫辉 |

## Schedule

| ID | WBS | Task | Type | Duration | Start | Finish | Predecessors | Complete | Remaining | Actual start | Baseline start | Baseline finish | Baseline duration | Constraint | Resources | Work | Actual work | Cost | Baseline cost | Actual cost |
| --- | --- | --- | --- | --- | --- | --- | --- | --- | --- | --- | --- | --- | --- | --- | --- | --- | --- | --- | --- | --- |
| 1 | 1 | **会员刷卡积分管理系统** |  | 61.33d | 2018-07-01 A | 2018-08-31 |  | 56% | 26.93d |  | 2018-07-01 | 2018-08-31 | 61.33d |  |  | 277.15h | 231.1h | 12,286 | 12,286 | 10,684 |
| 2 | 1.1 | **1.先启阶段** |  | 7d | 2018-07-01 A | 2018-07-06 |  | 82% | 1.26d |  | 2018-07-01 | 2018-07-06 | 7d |  |  | 179.1h | 161.1h | 8,124 | 8,124 | 7,524 |
| 3 | 1.1.1 | **1.1 项目管理** |  | 7d | 2018-07-01 A | 2018-07-06 |  | 75% | 1.75d |  | 2018-07-01 | 2018-07-06 | 7d |  | 伍锦彬; 徐兆科 | 102h | 90h | 5,280 | 5,280 | 4,680 |
| 4 | 1.1.1.1 | 1.1.1 立项 | manual | 1d | 2018-07-01 A | 2018-07-01 A |  | 100% |  |  | 2018-07-01 | 2018-07-01 | 1d |  | 伍锦彬 | 6h | 6h | 360 | 360 | 360 |
| 5 | 1.1.1.2 | 1.1.2 制定项目开发计划 | manual | 1d | 2018-07-03 A | 2018-07-03 A | 4 | 100% |  |  | 2018-07-03 | 2018-07-03 | 1d | start no earlier than 2018-07-03 | 伍锦彬 | 6h | 6h | 360 | 360 | 360 |
| 6 | 1.1.1.3 | 1.1.3 制定项目进度计划 | manual | 1d | 2018-07-02 A | 2018-07-02 A | 4 | 100% |  |  | 2018-07-02 | 2018-07-02 | 1d |  | 伍锦彬 | 6h | 6h | 360 | 360 | 360 |
| 7 | 1.1.1.4 | 1.1.4 同行评测 | manual | 1d | 2018-07-06 | 2018-07-06 |  |  |  |  | 2018-07-06 | 2018-07-06 | 1d | start no earlier than 2018-07-06 |  |  |  |  |  |  |
| 8 | 1.1.2 | **1.2 配置管理** |  | 2d | 2018-07-02 A | 2018-07-03 A |  | 100% |  |  | 2018-07-02 | 2018-07-03 | 2d |  |  | 12h | 12h | 480 | 480 | 480 |
| 9 | 1.1.2.1 | 1.2.1 制定配置计划 | manual | 1d | 2018-07-02 A | 2018-07-02 A | 5 | 100% |  |  | 2018-07-02 | 2018-07-02 | 1d |  | 徐兆科 | 6h | 6h | 240 | 240 | 240 |
| 10 | 1.1.2.2 | 1.2.2 搭建配置环境 | manual | 1d | 2018-07-03 A | 2018-07-03 A | 9 | 100% |  |  | 2018-07-03 | 2018-07-03 | 1d |  | 徐兆科 | 6h | 6h | 240 | 240 | 240 |
| 11 | 1.1.3 | **1.3 需求开发** |  | 4d | 2018-07-03 A | 2018-07-05 A |  | 100% |  |  | 2018-07-03 | 2018-07-05 | 4d |  |  | 54h | 54h | 2,340 | 2,340 | 2,340 |
| 12 | 1.1.3.1 | 1.3.1 用例建模 | manual | 2d | 2018-07-03 A | 2018-07-04 A | 5 | 100% |  |  | 2018-07-03 | 2018-07-04 | 2d | start no earlier than 2018-07-03 | 马晓鹏; 黄鑫辉; 伍锦彬 | 36h | 36h | 1,560 | 1,560 | 1,560 |
| 13 | 1.1.3.2 | 1.3.2 用例阐述 | manual | 1d | 2018-07-05 A | 2018-07-05 A | 12 | 100% |  |  | 2018-07-05 | 2018-07-05 | 1d | finish no earlier than 2018-07-05 | 马晓鹏; 伍锦彬; 黄鑫辉 | 18h | 18h | 780 | 780 | 780 |
| 14 | 1.1.4 | **1.4 阶段评审** |  | 1d | 2018-07-06 A | 2018-07-06 |  | 52% | 0.48d |  | 2018-07-06 | 2018-07-06 | 1d |  |  | 11.1h | 5.1h | 24 | 24 | 24 |
| 15 | 1.1.4.1 | 1.4.1 先启配置状态审计 | manual | 1d | 2018-07-06 A | 2018-07-06 | 10 |  | 1d |  | 2018-07-06 | 2018-07-06 | 1d | start no earlier than 2018-07-06 |  | 6h |  |  |  |  |
| 16 | 1.1.4.2 | 1.4.2 评审需求工件 | manual | 1d | 2018-07-06 A | 2018-07-06 A | 13 | 100% |  |  | 2018-07-06 | 2018-07-06 | 1d |  |  | 4.5h | 4.5h |  |  |  |
| 17 | 1.1.4.3 | 1.4.3 发布开发基线 | manual | 0.1d | 2018-07-06 A | 2018-07-06 A |  | 100% |  |  | 2018-07-06 | 2018-07-06 | 0.1d |  | 徐兆科 | 0.6h | 0.6h | 24 | 24 | 24 |
| 18 | 1.2 | **2 精化阶段** |  | 5d | 2018-07-09 | 2018-07-12 |  | 49% | 2.53d | 2018-07-04 | 2018-07-09 | 2018-07-12 | 5d |  |  | 66.45h | 48h | 2,658 | 2,658 | 2,040 |
| 19 | 1.2.1 | 2.1 设计界面原型 | manual | 1d | 2018-07-04 | 2018-07-05 | 12 |  |  |  | 2018-07-09 | 2018-07-09 | 1d |  | 黄鑫辉 | 6h |  | 180 | 180 |  |
| 20 | 1.2.2 | **2.2 OOAD** |  | 4d | 2018-07-10 A | 2018-07-12 |  | 67% | 1.33d |  | 2018-07-10 | 2018-07-12 | 4d |  |  | 36h | 24h | 1,260 | 1,260 | 840 |
| 21 | 1.2.2.1 | 2.2.1 分析模型 | manual | 2d | 2018-07-10 A | 2018-07-11 | 12 | 50% | 1d |  | 2018-07-10 | 2018-07-11 | 2d |  | 马晓鹏; 黄鑫辉 | 24h | 12h | 840 | 840 | 420 |
| 22 | 1.2.2.2 | 2.2.2 设计模型 | manual | 1d | 2018-07-12 A | 2018-07-12 A | 12 | 100% |  |  | 2018-07-12 | 2018-07-12 | 1d |  | 马晓鹏; 黄鑫辉 | 12h | 12h | 420 | 420 | 420 |
| 23 | 1.2.3 | 2.3 数据库建模与数据库设计 | manual | 2d | 2018-07-10 A | 2018-07-11 A | 22 | 100% |  |  | 2018-07-10 | 2018-07-11 | 2d |  | 徐兆科; 伍锦彬 | 24h | 24h | 1,200 | 1,200 | 1,200 |
| 24 | 1.2.4 | **2.4 评审阶段** |  | 1d | 2018-07-12 A | 2018-07-12 |  |  | 1d |  | 2018-07-12 | 2018-07-12 | 1d |  |  | 0.45h |  | 18 | 18 |  |
| 25 | 1.2.4.1 | 2.4.1 精化配置状态审核 | manual | 1d | 2018-07-12 | 2018-07-12 |  |  |  |  | 2018-07-12 | 2018-07-12 | 1d |  |  |  |  |  |  |  |
| 26 | 1.2.4.2 | 2.4.2 评审设计工件 | manual | 1d | 2018-07-12 | 2018-07-12 |  |  |  |  | 2018-07-12 | 2018-07-12 | 1d |  |  |  |  |  |  |  |
| 27 | 1.2.4.3 | 2.4.3 发布设计基线 | manual | 0.1d | 2018-07-12 A | 2018-07-12 |  |  | 0.1d |  | 2018-07-12 | 2018-07-12 | 0.1d |  | 徐兆科 | 0.45h |  | 18 | 18 |  |

| ID | WBS | Task | Type | Duration | Start | Finish | Predecessors | Complete | Remaining | Baseline start | Baseline finish | Baseline duration | Resources | Work | Actual work | Cost | Baseline cost | Actual cost |
| --- | --- | --- | --- | --- | --- | --- | --- | --- | --- | --- | --- | --- | --- | --- | --- | --- | --- | --- |
| 28 | 1.3 | **3 构建阶段** |  | 5d | 2018-07-13 A | 2018-07-18 |  | 60% | 2d | 2018-07-13 | 2018-07-18 | 5d |  | 28.6h | 22h | 1,384 | 1,384 | 1,120 |
| 29 | 1.3.1 | 3.1 单元编码 | manual | 2d | 2018-07-13 A | 2018-07-16 A | 22 | 100% |  | 2018-07-13 | 2018-07-16 | 2d | 伍锦彬; 徐兆科; 黄鑫辉; 马晓鹏 | 16h | 16h | 880 | 880 | 880 |
| 30 | 1.3.2 | 3.2 系统集成 | manual | 1d | 2018-07-17 A | 2018-07-17 A | 29 | 100% |  | 2018-07-17 | 2018-07-17 | 1d | 马晓鹏 | 6h | 6h | 240 | 240 | 240 |
| 31 | 1.3.3 | 3.3 集成测试 | manual | 1d | 2018-07-17 | 2018-07-18 | 30 |  |  | 2018-07-18 | 2018-07-18 | 1d | 徐兆科 | 6h |  | 240 | 240 |  |
| 32 | 1.3.4 | **3.4 评审阶段** |  | 1d | 2018-07-18 | 2018-07-18 |  |  |  | 2018-07-18 | 2018-07-18 | 1d |  | 0.6h |  | 24 | 24 |  |
| 33 | 1.3.4.1 | 3.4.1 构建配置状态审计 | manual | 0.5d | 2018-07-18 | 2018-07-18 |  |  |  | 2018-07-18 | 2018-07-18 | 0.5d |  |  |  |  |  |  |
| 34 | 1.3.4.2 | 3.4.2 评审构建工件 | manual | 0.4d | 2018-07-18 | 2018-07-18 |  |  |  | 2018-07-18 | 2018-07-18 | 0.4d |  |  |  |  |  |  |
| 35 | 1.3.4.3 | 3.4.3 发布构建基线 | manual | 0.1d | 2018-07-18 | 2018-07-18 |  |  |  | 2018-07-18 | 2018-07-18 | 0.1d | 徐兆科 | 0.6h |  | 24 | 24 |  |
| 36 | 1.4 | **4 产品化阶段** |  | 0.5d | 2018-07-19 | 2018-07-19 |  |  |  | 2018-07-19 | 2018-07-19 | 0.5d |  | 3h |  | 120 | 120 |  |
| 37 | 1.4.1 | **4.1 产品部署** |  | 0.5d | 2018-07-19 | 2018-07-19 |  |  |  | 2018-07-19 | 2018-07-19 | 0.5d |  | 1.2h |  | 48 | 48 |  |
| 38 | 1.4.1.1 | 4.1.1 搭建环境 | manual | 0.1d | 2018-07-19 | 2018-07-19 |  |  |  | 2018-07-19 | 2018-07-19 | 0.1d | 马晓鹏 | 0.6h |  | 24 | 24 |  |
| 39 | 1.4.1.2 | 4.1.2 运行产品 | manual | 0.1d | 2018-07-19 | 2018-07-19 |  |  |  | 2018-07-19 | 2018-07-19 | 0.1d | 马晓鹏 | 0.6h |  | 24 | 24 |  |
| 40 | 1.4.2 | 4.2 产品测试 | manual | 0.3d | 2018-07-19 | 2018-07-19 |  |  |  | 2018-07-19 | 2018-07-19 | 0.3d | 徐兆科 | 1.8h |  | 72 | 72 |  |
| 41 | 1.4.3 | **4.3 评审阶段暨结项** |  | 0.4d | 2018-07-19 | 2018-07-19 |  |  |  | 2018-07-19 | 2018-07-19 | 0.4d |  |  |  |  |  |  |
| 42 | 1.4.3.1 | 4.3.1 配置状态审计 | manual | 1.33d? | 2018-07-19 | 2018-07-19 |  |  |  | 2018-07-19 | 2018-07-19 | 1.33d? |  |  |  |  |  |  |
| 43 | 1.4.3.2 | 4.3.2 评审产品 | manual | 1.33d? | 2018-07-19 | 2018-07-19 |  |  |  | 2018-07-19 | 2018-07-19 | 1.33d? |  |  |  |  |  |  |
| 44 | 1.4.3.3 | 4.3.3 结项 | manual | 1.33d? | 2018-07-19 | 2018-07-19 |  |  |  | 2018-07-19 | 2018-07-19 | 1.33d? |  |  |  |  |  |  |
